Schedule from MS Project, 2021-01-01 to 2021-06-10.

## Calendars

- Стандартный: Mon-Fri 09:00-13:00, 14:00-18:00; Sat-Sun off.

## Resources

| Resource |
| --- |
| Менеджер проекта |
| Бизнес-аналитик |
| Системный аналитик |
| Тестировщик |
| Специалист по внедрению |
| Дизайнер |
| Frontend-разработчик |
| Backend-разработчик |

## Schedule

| ID | Task | Duration | Start | Finish | Predecessors | Total slack | Free slack | Constraint | Resources | Work |
| --- | --- | --- | --- | --- | --- | --- | --- | --- | --- | --- |
| 1 | Сбор требований | 10d | 2021-01-01 | 2021-01-14 |  | 0d |  | start no earlier than 2021-01-01 | Бизнес-аналитик; Менеджер проекта [40%] | 48h |
| 2 | Разработка и согласование ТЗ | 10d | 2021-01-15 | 2021-01-28 | 1 | 0d |  |  | Бизнес-аналитик; Менеджер проекта [50%]; Системный аналитик [40%] | 152h |
| 3 | Разработка технического проекта | 4d | 2021-01-29 | 2021-02-03 | 2 | 0d |  |  | Бизнес-аналитик [60%]; Менеджер проекта [30%]; Системный аналитик | 48h |
| 4 | Разработка моделей бизнес-процессов | 7d | 2021-02-04 | 2021-02-12 | 3 | 0d |  |  | Бизнес-аналитик | 56h |
| 5 | Проектирование интерфейсов | 5d | 2021-02-15 | 2021-02-19 | 4 | 77d | 0d |  | Дизайнер; Менеджер проекта [30%]; Бизнес-аналитик [40%] | 64h |
| 6 | Проектирование иерархии пользовательских интерфейсов | 2d | 2021-02-22 | 2021-02-23 | 5 | 77d |  |  | Бизнес-аналитик; Дизайнер [50%]; Менеджер проекта [30%] | 27.2h |
| 7 | Проектирование архитектуры серверной части | 5d | 2021-02-15 | 2021-02-19 | 4 | 0d |  |  | Менеджер проекта [30%]; Системный аналитик | 48h |
| 8 | Определение методов WEB API и их сигнатур | 2d | 2021-02-22 | 2021-02-23 | 7 | 0d |  |  | Системный аналитик; Менеджер проекта [20%] | 19.2h |
| 9 | Разработка тестов для серверной части | 10d | 2021-02-24 | 2021-03-09 | 8 | 0d |  |  | Менеджер проекта [30%]; Тестировщик [50%]; Backend-разработчик | 92h |
| 10 | Разработка тестов для клиентской части | 10d | 2021-03-10 | 2021-03-23 | 9 | 0d |  |  | Менеджер проекта [30%]; Тестировщик [50%]; Frontend-разработчик | 92h |
| 11 | Разработка серверной части | 20d | 2021-03-10 | 2021-04-06 | 9 | 15d | 0d |  | Менеджер проекта [15%]; Backend-разработчик | 184h |
| 12 | Разработка клиентской части | 25d | 2021-03-24 | 2021-04-27 | 10 | 0d |  |  | Менеджер проекта [15%]; Frontend-разработчик | 230h |
| 13 | Тестирование серверной части | 10d | 2021-04-07 | 2021-04-20 | 11 | 30d |  |  | Менеджер проекта [15%]; Тестировщик; Backend-разработчик [60%] | 140h |
| 14 | Тестирование взаимодействия серверной части и клиентской части | 5d | 2021-04-28 | 2021-05-04 | 12, 11 | 0d |  |  | Менеджер проекта [20%]; Тестировщик; Backend-разработчик [30%]; Frontend-разработчик [30%] | 72h |
| 15 | Тестирование работы клиентской части | 10d | 2021-05-05 | 2021-05-18 | 14 | 0d |  |  | Менеджер проекта [20%]; Тестировщик; Frontend-разработчик [60%] | 144h |
| 16 | Кроссбраузерное тестирование интерфейсов | 10d | 2021-05-19 | 2021-06-01 | 15 | 0d |  |  | Менеджер проекта [20%]; Тестировщик | 32h |
| 17 | Разработка пользовательской документации | 4d | 2021-06-02 | 2021-06-07 | 16, 13 | 0d |  |  | Бизнес-аналитик; Менеджер проекта [20%]; Системный аналитик | 70.4h |
| 18 | Внедрение ПО | 3d | 2021-06-08 | 2021-06-10 | 17 | 0d |  |  | Менеджер проекта [50%]; Специалист по внедрению | 36h |
